# 2.3.8 Blokhut

Schedule from MS Project, 2018-10-09 to 2018-10-15, status date 2018-10-14, costs in €.

## Calendars

- Blokhut: Mon-Fri 08:30-12:00, 12:30-17:00; Sat-Sun off. Exceptions (off unless hours are given): 2018-10-11 (Collectieve sluitingsdag).

## Resources

| Resource | Rate |
| --- | --- |
| Koen | 30 |
| Peter | 30 |
| Jan | 30 |
| Blokhut | 1750 |
| Zand | 12.5 |
| Kiezelstenen | 25 |
| Cement | 60 |

## Schedule

| ID | WBS | Task | Type | Duration | Start | Finish | Predecessors | Total slack | Free slack | Resources | Work | Cost |
| --- | --- | --- | --- | --- | --- | --- | --- | --- | --- | --- | --- | --- |
| 1 | 1 | **Voorbereiding** |  | 0.22d | 2018-10-09 08:30 | 2018-10-09 10:15 |  | 0.02d |  |  | 4.5h | 1,885 |
| 2 | 1.1 | Onderdelen uitpakken en controleren |  | 0.75h | 2018-10-09 08:30 | 2018-10-09 09:15 |  | 0.02d | 0d | Koen; Jan; Blokhut | 1.5h | 1,795 |
| 3 | 1.2 | Plan bespreken met werklieden |  | 1h | 2018-10-09 09:15 | 2018-10-09 10:15 | 2 | 0.02d | 0d | Jan; Koen; Peter | 3h | 90 |
| 4 | 1.3 | Einde voorbereiding | milestone | 0d | 2018-10-09 10:15 | 2018-10-09 10:15 | 3 | 4.38d |  |  |  |  |
| 5 | 2 | **Fundering** |  | 1.47d | 2018-10-09 10:15 | 2018-10-10 14:30 |  | 0.02d |  |  | 7.5h | 322.5 |
| 6 | 2.1 | Uitgraven fundering |  | 2h | 2018-10-09 10:15 | 2018-10-09 12:45 | 3 | 0.02d | 0d | Koen; Peter; Cement; Kiezelstenen; Zand | 4h | 217.5 |
| 7 | 2.2 | Plaatsen bekesting |  | 0.5h | 2018-10-09 12:45 | 2018-10-09 13:15 | 6 | 0.02d | 0d | Koen; Peter | 1h | 30 |
| 8 | 2.3 | Beton storten |  | 1h | 2018-10-09 13:15 | 2018-10-09 14:15 | 7 | 0.02d | 0d | Jan; Koen | 2h | 60 |
| 9 | 2.4 | Verwijderen bekisting |  | 0.25h | 2018-10-10 14:15 | 2018-10-10 14:30 | 8FS+1d | 0.02d | 0d | Jan; Koen | 0.5h | 15 |
| 10 | 2.5 | Einde fundering | milestone | 0d | 2018-10-10 14:30 | 2018-10-10 14:30 | 9 | 2.11d |  |  |  |  |
| 11 | 3 | **Wanden** |  | 0.15d | 2018-10-10 14:30 | 2018-10-10 15:40 |  | 0.02d |  |  | 3.5h | 105 |
| 12 | 3.1 | Basislaag planken plaatsen |  | 0.33h | 2018-10-10 14:30 | 2018-10-10 14:50 | 9 | 0.02d | 0d | Koen; Jan; Peter | 1h | 30 |
| 13 | 3.2 | Overige planken plaatsen |  | 0.67h | 2018-10-10 14:50 | 2018-10-10 15:30 | 12 | 0.02d | 0d | Koen; Jan; Peter | 2h | 60 |
| 14 | 3.3 | Blokhut verankeren op fundering |  | 0.17h | 2018-10-10 15:30 | 2018-10-10 15:40 | 13 | 0.02d | 0d | Koen; Jan; Peter | 0.5h | 15 |
| 15 | 3.4 | Einde wanden | milestone | 0d | 2018-10-10 15:40 | 2018-10-10 15:40 | 14 | 1.96d |  |  |  |  |
| 16 | 4 | **Dak** |  | 0.27d | 2018-10-10 15:40 | 2018-10-12 09:20 |  | 0.02d |  |  | 5.21h | 156.18 |
| 17 | 4.1 | Daknok en latten bevestigen |  | 0.67h | 2018-10-10 15:40 | 2018-10-10 16:20 | 14 | 0.02d | 0d | Jan; Koen; Peter | 2h | 60 |
| 18 | 4.2 | Houten platen leggen op het dak |  | 0.33h | 2018-10-10 16:20 | 2018-10-10 16:40 | 17 | 0.02d | 0d | Jan; Koen; Peter | 1h | 30 |
| 19 | 4.3 | Roofing op lengte snijden |  | 0.17h | 2018-10-10 16:40 | 2018-10-10 16:50 | 18 | 0.02d | 0d | Jan; Peter; Koen | 0.5h | 15 |
| 20 | 4.4 | Roofin bevestigen op platen |  | 1h | 2018-10-10 16:50 | 2018-10-12 09:20 | 19 | 0.71d | 0d | Jan; Koen | 1.71h | 51.18 |
| 21 | 4.5 | Einde dak | milestone | 0d | 2018-10-12 09:20 | 2018-10-12 09:20 | 20 | 1.46d |  |  |  |  |
| 22 | 5 | **Afwerking** |  | 2.91d | 2018-10-09 12:45 | 2018-10-15 11:30 |  | 0.19d |  |  | 13h | 390 |
| 23 | 5.1 | Vensters klaarmaken |  | 1h | 2018-10-09 12:45 | 2018-10-09 13:45 | 6 | 2.41d | 1.51d | Jan | 1h | 30 |
| 24 | 5.2 | Deur klaarmaken (slot, scharnieren) |  | 1h | 2018-10-09 12:45 | 2018-10-09 13:45 | 6 | 2.41d | 1.51d | Jan | 1h | 30 |
| 25 | 5.3 | Ramen en deuren plaatsen |  | 1h | 2018-10-12 09:20 | 2018-10-12 10:20 | 20, 23, 24 | 0.9d |  | Jan | 1h | 30 |
| 26 | 5.4 | Vloeren in de blokhot |  | 1h | 2018-10-15 08:30 | 2018-10-15 09:30 | 20 | 0d |  | Peter | 1h | 30 |
| 27 | 5.5 | Blokhut vernissen |  | 2.5h | 2018-10-12 09:20 | 2018-10-12 11:50 | 20 | 0.71d |  | Koen; Jan | 5h | 150 |
| 28 | 5.6 | Gazon rondom bijwerken |  | 2h | 2018-10-15 09:30 | 2018-10-15 11:30 | 25, 26, 27 | 0d |  | Jan; Koen | 4h | 120 |
| 29 | 5.7 | Einde afwerking | milestone | 0d | 2018-10-15 11:30 | 2018-10-15 11:30 | 28 | 0.19d |  |  |  |  |

| ID | WBS | Task | Type | Duration | Start | Finish | Predecessors | Total slack | Resources | Work | Cost |
| --- | --- | --- | --- | --- | --- | --- | --- | --- | --- | --- | --- |
| 30 | 6 | **Oplevering** |  | 0.19d | 2018-10-15 11:30 | 2018-10-15 13:30 |  | 0d |  | 1.5h | 45 |
| 31 | 6.1 | Schoonmaken |  | 1h | 2018-10-15 11:30 | 2018-10-15 13:00 | 28 | 0d | Koen | 1h | 30 |
| 32 | 6.2 | Eindcontrole voor oplevering |  | 0.5h | 2018-10-15 13:00 | 2018-10-15 13:30 | 31 | 0d | Koen | 0.5h | 15 |
| 33 | 6.3 | Einde oplevering | milestone | 0d | 2018-10-15 13:30 | 2018-10-15 13:30 | 32 | 0d |  |  |  |
| 34 | 7 | Einde blokhut | milestone | 0d | 2018-10-15 13:30 | 2018-10-15 13:30 | 33 | 0d |  |  |  |

Notes:
- 33: Niet vergeten een attentie klaar te zetten voor de werklieden.
