# 1819 2TINABCD-01-versie1

Schedule from MS Project, 2018-12-05 to 2019-01-24, costs in €.

## Calendars

- 2TINABCD01: Mon-Fri 08:30-12:30, 13:30-17:30; Sat-Sun off. Exceptions (off unless hours are given): 2018-12-27 to 2019-01-02 (Collectieve sluiting).

## Resources

| Resource | Rate |
| --- | --- |
| Andy | 45 |
| Timmy | 40 |
| Devon | 35 |
| Silvia | 35 |
| Servers | 3000 |
| Hardware | 4500 |

## Schedule

| ID | WBS | Task | Type | Duration | Start | Finish | Predecessors | Baseline start | Baseline finish | Baseline duration | Total slack | Free slack | Resources | Work | Cost | Baseline cost |
| --- | --- | --- | --- | --- | --- | --- | --- | --- | --- | --- | --- | --- | --- | --- | --- | --- |
| 1 | 1 | **Ontwikkeling FutureApp1.0** |  | 31.5d | 2018-12-05 | 2019-01-24 |  | 2018-12-05 | 2019-01-24 | 31.5d | 0d |  |  | 408h | 22,560 | 22,560 |
| 2 | 1.1 | **Opstart project** |  | 3d | 2018-12-05 | 2018-12-07 |  | 2018-12-05 | 2018-12-07 | 3d | 0.5d |  |  | 36h | 1,480 | 1,480 |
| 3 | 1.1.1 | Bespreking klant |  | 0.5d | 2018-12-05 | 2018-12-05 |  | 2018-12-05 | 2018-12-05 | 0.5d | 0.5d | 0d | Andy; Devon; Silvia; Timmy | 16h | 620 | 620 |
| 4 | 1.1.2 | Opstellen van projectplan |  | 1d | 2018-12-05 | 2018-12-06 | 3 | 2018-12-05 | 2018-12-06 | 1d | 0.5d | 0d | Andy; Timmy | 16h | 680 | 680 |
| 5 | 1.1.3 | Goedkeuring klant ontvangen en review uitvoeren |  | 0.5d | 2018-12-07 | 2018-12-07 | 4FS+1d | 2018-12-07 | 2018-12-07 | 0.5d | 0.5d | 0d | Andy | 4h | 180 | 180 |
| 6 | 1.1.4 | Einde Opstart project | milestone | 0d | 2018-12-07 | 2018-12-07 | 3, 4, 5 | 2018-12-07 | 2018-12-07 | 0d | 0.5d | 0d |  |  |  |  |
| 7 | 1.2 | **View analyseren** |  | 2d | 2018-12-10 | 2018-12-11 |  | 2018-12-10 | 2018-12-11 | 2d | 0.5d |  |  | 48h | 9,380 | 9,380 |
| 8 | 1.2.1 | Development view opstellen |  | 2d | 2018-12-10 | 2018-12-11 | 6 | 2018-12-10 | 2018-12-11 | 2d | 0.5d | 0d | Hardware; Devon | 16h | 5,060 | 5,060 |
| 9 | 1.2.2 | Physical view opstellen |  | 2d | 2018-12-10 | 2018-12-11 | 6 | 2018-12-10 | 2018-12-11 | 2d | 0.5d | 0d | Servers; Andy | 16h | 3,720 | 3,720 |
| 10 | 1.2.3 | Process view opstellen |  | 1d | 2018-12-10 | 2018-12-10 | 6 | 2018-12-10 | 2018-12-10 | 1d | 1.5d | 1d | Timmy | 8h | 320 | 320 |
| 11 | 1.2.4 | Logical view opstellen |  | 1d | 2018-12-10 | 2018-12-10 | 6 | 2018-12-10 | 2018-12-10 | 1d | 1.5d | 1d | Silvia | 8h | 280 | 280 |
| 12 | 1.2.5 | Einde View analyseren | milestone | 0d | 2018-12-11 | 2018-12-11 | 8, 9, 10, 11 | 2018-12-11 | 2018-12-11 | 0d | 0.5d | 0d |  |  |  |  |
| 13 | 1.3 | **Business cases** |  | 4d | 2018-12-12 | 2018-12-17 |  | 2018-12-12 | 2018-12-17 | 4d | 0.5d |  |  | 40h | 1,480 | 1,480 |
| 14 | 1.3.1 | Business uses cases |  | 1d | 2018-12-12 | 2018-12-12 | 12 | 2018-12-12 | 2018-12-12 | 1d | 3.5d | 3d | Andy; Silvia | 16h | 640 | 640 |
| 15 | 1.3.2 | System use cases |  | 3d | 2018-12-13 | 2018-12-17 | 12 | 2018-12-13 | 2018-12-17 | 3d | 0.5d | 0d | Silvia | 24h | 840 | 840 |
| 16 | 1.3.3 | Einde business cases | milestone | 0d | 2018-12-17 | 2018-12-17 | 14, 15 | 2018-12-17 | 2018-12-17 | 0d | 0.5d | 0d |  |  |  |  |
| 17 | 1.4 | **Sprint 1** |  | 10d | 2018-12-18 | 2019-01-07 |  | 2018-12-18 | 2019-01-07 | 10d | 0d |  |  | 136h | 4,880 | 4,880 |
| 18 | 1.4.1 | Sprint planning |  | 0.5d | 2018-12-18 | 2018-12-18 | 16 | 2018-12-18 | 2018-12-18 | 0.5d | 0.5d | 0d | Andy | 4h | 180 | 180 |
| 19 | 1.4.2 | Software ontwikkelen |  | 7.5d | 2018-12-18 | 2019-01-03 | 18 | 2018-12-18 | 2019-01-03 | 7.5d | 0.5d | 0d | Devon | 60h | 2,100 | 2,100 |
| 20 | 1.4.3 | Testcases uitschrijven |  | 7.5d | 2018-12-18 | 2019-01-03 | 18 | 2018-12-18 | 2019-01-03 | 7.5d | 0.5d | 0d | Silvia | 60h | 2,100 | 2,100 |
| 21 | 1.4.4 | Sprint afwerken |  | 0.5d | 2019-01-03 | 2019-01-04 | 19, 20 | 2019-01-03 | 2019-01-04 | 0.5d | 0.5d |  | Devon; Andy | 4h | 140 | 140 |
| 22 | 1.4.5 | Software oplever aan klant |  | 1d | 2019-01-07 | 2019-01-07 | 21 | 2019-01-07 | 2019-01-07 | 1d | 0d |  | Andy | 8h | 360 | 360 |
| 23 | 1.4.6 | Einde sprint 1 | milestone | 0d | 2019-01-07 | 2019-01-07 | 18, 19, 20, 21, 22 | 2019-01-07 | 2019-01-07 | 0d | 0d |  |  |  |  |  |
| 24 | 1.5 | **Sprint 2** |  | 9.5d | 2019-01-08 | 2019-01-21 |  | 2019-01-08 | 2019-01-21 | 9.5d | 0d |  |  | 140h | 5,060 | 5,060 |
| 25 | 1.5.1 | Sprint planning |  | 0.5d | 2019-01-08 | 2019-01-08 | 23 | 2019-01-08 | 2019-01-08 | 0.5d | 0d |  | Andy | 4h | 180 | 180 |
| 26 | 1.5.2 | Software ontwikkelen |  | 7.5d | 2019-01-08 | 2019-01-17 | 25 | 2019-01-08 | 2019-01-17 | 7.5d | 0d |  | Devon | 60h | 2,100 | 2,100 |
| 27 | 1.5.3 | Testcases uitschrijven |  | 7.5d | 2019-01-08 | 2019-01-17 | 25 | 2019-01-08 | 2019-01-17 | 7.5d | 0d |  | Silvia | 60h | 2,100 | 2,100 |
| 28 | 1.5.4 | Sprint afwerken |  | 0.5d | 2019-01-18 | 2019-01-18 | 26, 27 | 2019-01-18 | 2019-01-18 | 0.5d | 0d |  | Devon; Andy | 8h | 320 | 320 |
| 29 | 1.5.5 | Software oplever aan klant |  | 1d | 2019-01-18 | 2019-01-21 | 28 | 2019-01-18 | 2019-01-21 | 1d | 0d |  | Andy | 8h | 360 | 360 |
| 30 | 1.5.6 | Einde sprint 2 | milestone | 0d | 2019-01-21 | 2019-01-21 | 25, 26, 27, 28, 29 | 2019-01-21 | 2019-01-21 | 0d | 0d |  |  |  |  |  |

Notes:
- 9: Omdat Devon te veel werk heeft, zetten we Andy op deze taak

| ID | WBS | Task | Type | Duration | Start | Finish | Predecessors | Baseline start | Baseline finish | Baseline duration | Total slack | Resources | Work | Cost | Baseline cost |
| --- | --- | --- | --- | --- | --- | --- | --- | --- | --- | --- | --- | --- | --- | --- | --- |
| 31 | 1.6 | **Testfase** |  | 3d | 2019-01-21 | 2019-01-24 |  | 2019-01-21 | 2019-01-24 | 3d | 0d |  | 8h | 280 | 280 |
| 32 | 1.6.1 | Acceptatietesten |  | 3d | 2019-01-21 | 2019-01-24 | 30 | 2019-01-21 | 2019-01-24 | 3d | 0d |  |  |  |  |
| 33 | 1.6.2 | Exploratory testen |  | 1d | 2019-01-21 | 2019-01-22 | 30 | 2019-01-21 | 2019-01-22 | 1d | 2d | Silvia | 8h | 280 | 280 |
| 34 | 1.6.3 | Einde Testfase | milestone | 0d | 2019-01-24 | 2019-01-24 | 32, 33 | 2019-01-24 | 2019-01-24 | 0d | 0d |  |  |  |  |
| 35 | 1.7 | Einde Ontwikkeling FutureApp1.0 | milestone | 0d | 2019-01-24 | 2019-01-24 | 34 | 2019-01-24 | 2019-01-24 | 0d | 0d |  |  |  |  |

Notes:
- 32: Taak wordt uitgevoerd door klant.
